# QuanTri

Schedule from MS Project, 2024-02-02 to 2024-04-03, costs in ₫, A marks actual dates.

## Calendars

- Standard: Mon-Fri 08:00-12:00, 13:00-17:00; Sat-Sun off.

## Resources

| Resource | Group | Rate |
| --- | --- | --- |
| Nguyễn Ngọc Cảnh Phong - Quản Lý | Quản Lý | 100000 |
| Trần Văn Huy - Lập Trình Viên 1 | Lập Trình | 40000 |
| Hoàng Thanh Tùng- Kiểm Thử Viên 1 | Kiểm Thử | 50000 |
| Trần Văn Huy - Kĩ Thuật Viên | Kĩ Thuật | 50000 |
| Đỗ Thị Diệu Ái - Phân Tích Viên 2 | Phân Tích | 55000 |
| Hoàng Thị Kiều Oanh - Thiết Kế Giao Diện 2 | Giao Diện | 40000 |
| Nguyễn Ngọc Cảnh Phong - Lập Trình Viên 2 | Lập Trình | 40000 |
| Hoàng Thanh Tùng - Phân Tích Viên 1 | Phân Tích | 55000 |
| Lê Thị Bảo Trâm - Thiết Kế Giao Diện 1 | Giao Diện | 40000 |
| Nguyễn Thị Minh Thư- Kiểm Thử Viên 2 | Kiểm Thử | 40000 |
| Nguyễn Ngọc Cảnh Phong - Thiết Kế Dữ Liệu 1 | Dữ Liệu | 70000 |
| Đỗ Thị Diệu Ái - Thiết Kế Dữ Liệu 2 | Dữ Liệu | 70000 |
| Hoàng Thị Kiều Oanh - Phân Tích Viên 3 | Phân Tích | 55000 |
| Nguyễn Thị Minh Thư - Thiết Kế Dữ Liệu 3 | Dữ Liệu | 70000 |
| Kĩ thuật viên |  |  |

## Schedule

| ID | WBS | Task | Duration | Start | Finish | Predecessors | Complete | Remaining | Total slack | Free slack | Constraint | Resources | Work | Actual work | Cost | Actual cost |
| --- | --- | --- | --- | --- | --- | --- | --- | --- | --- | --- | --- | --- | --- | --- | --- | --- |
| 1 | 1 | **XÂY DỰNG HỆ THỐNG QUẢN LÝ KẾT NỐI VÀ CUNG CẤP GIA SƯ TP-HUẾ** | 44d? | 2024-02-02 A | 2024-04-03 |  | 1% | 43.36d? | 0d |  |  |  | 1379.1h | 8h | 77,130,500 | 800,000 |
| 2 | 1.1 | Bản kế hoạch dự án | 1d | 2024-02-21 A | 2024-02-21 A |  | 100% |  |  |  | finish no earlier than 2024-02-21 | Nguyễn Ngọc Cảnh Phong - Quản Lý | 8h | 8h | 800,000 | 800,000 |
| 3 | 1.2 | Thời gian phê duyệt dự án | 1d | 2024-02-22 A | 2024-02-22 A | 2 | 100% |  |  |  | start no earlier than 2024-02-22 |  |  |  |  |  |
| 4 | 1.3 | **Phân Tích** | 15d | 2024-02-23 | 2024-03-14 |  |  |  | 0d |  |  |  | 195.1h |  | 11,090,500 |  |
| 5 | 1.3.1 | **Thu thập, Phân tích Nhu Cầu Khách Hàng** | 2d | 2024-02-23 | 2024-02-26 |  |  |  | 0d |  |  | Hoàng Thanh Tùng - Phân Tích Viên 1 | 37.5h |  | 2,062,500 |  |
| 6 | 1.3.1.1 | **Trao đổi, thu nhập yêu cầu khách hàng** | 1d | 2024-02-23 | 2024-02-23 |  |  |  | 0d |  |  |  | 8h |  | 440,000 |  |
| 7 | 1.3.1.1.1 | Gặp mặt, trao đổi với khách hàng | 0.5d | 2024-02-23 | 2024-02-23 | 3 |  |  | -11.5d | 0d |  | Hoàng Thị Kiều Oanh - Phân Tích Viên 3 | 4h |  | 220,000 |  |
| 8 | 1.3.1.1.2 | Thu nhập, ghi chú các thông tin, nhu cầu của khách hàng | 0.5d | 2024-02-23 | 2024-02-23 | 7 |  |  | -11.5d | 0d |  | Hoàng Thị Kiều Oanh - Phân Tích Viên 3 | 4h |  | 220,000 |  |
| 9 | 1.3.1.2 | **Phân tích nhu cầu khách hàng** | 1d | 2024-02-26 | 2024-02-26 |  |  |  | 0d |  |  |  | 13.5h |  | 742,500 |  |
| 10 | 1.3.1.2.1 | Chọn lọc, phân loại các yêu cầu của khách hàng | 3h | 2024-02-26 | 2024-02-26 | 8 |  |  | -11.5d | 0d |  | Đỗ Thị Diệu Ái - Phân Tích Viên 2; Hoàng Thị Kiều Oanh - Phân Tích Viên 3 | 6h |  | 330,000 |  |
| 11 | 1.3.1.2.2 | Xác định các yêu cầu chức năng và phi chức năng | 2.5h | 2024-02-26 | 2024-02-26 | 10 |  |  | -11.5d | 0d |  | Đỗ Thị Diệu Ái - Phân Tích Viên 2; Hoàng Thị Kiều Oanh - Phân Tích Viên 3 | 5h |  | 275,000 |  |
| 12 | 1.3.1.2.3 | Tổng kết những thông tin đã thu nhập và phân tích | 1.5h | 2024-02-26 | 2024-02-26 | 11 |  |  | -11.5d | 0d |  | Đỗ Thị Diệu Ái - Phân Tích Viên 2 | 1.5h |  | 82,500 |  |
| 13 | 1.3.1.2.4 | Xác định những yêu cầu đáp ứng được và không đáp ứng được | 1h | 2024-02-26 | 2024-02-26 | 12 |  |  | -11.5d | 0d |  | Hoàng Thị Kiều Oanh - Phân Tích Viên 3 | 1h |  | 55,000 |  |
| 14 | 1.3.2 | **Lên ý tưởng, Phân tích cấu trúc phần mềm, phi chức năng, thông số kỹ thuật, giao diện, xác định rủi ro, ước lượng công việc** | 10d | 2024-02-27 | 2024-03-11 |  |  |  | 0d |  |  |  | 117.6h |  | 6,468,000 |  |
| 15 | 1.3.2.1 | **Tổ chức và lên ý tưởng** | 1d | 2024-02-27 | 2024-02-27 |  |  |  | 0d |  |  |  | 8h |  | 440,000 |  |
| 16 | 1.3.2.1.1 | Tổ chức họp đội ngũ trong việc lên ý tưởng | 0.4d | 2024-02-27 | 2024-02-27 | 13 |  |  | -11.5d | 0d |  | Đỗ Thị Diệu Ái - Phân Tích Viên 2 | 3.2h |  | 176,000 |  |
| 17 | 1.3.2.1.2 | Xây dựng mô phỏng dự án | 0.6d | 2024-02-27 | 2024-02-27 | 16 |  |  | -11.5d | 0d |  | Đỗ Thị Diệu Ái - Phân Tích Viên 2 | 4.8h |  | 264,000 |  |
| 18 | 1.3.2.2 | **Phân tích cấu trúc phần mềm** | 2d | 2024-02-28 | 2024-02-29 |  |  |  | 0d |  |  |  | 24h |  | 1,320,000 |  |
| 19 | 1.3.2.2.1 | Xác định và mô tả các chức năng cần thiết của hệ thống | 1d | 2024-02-28 | 2024-02-28 | 17 |  |  | -11.5d | 0d |  | Đỗ Thị Diệu Ái - Phân Tích Viên 2 | 8h |  | 440,000 |  |
| 20 | 1.3.2.2.2 | Tạo biểu đồ usecase và mô tả chi tiết các yêu cầu chức năng | 1d | 2024-02-29 | 2024-02-29 | 19 |  |  | -11.5d | 0d |  | Đỗ Thị Diệu Ái - Phân Tích Viên 2; Hoàng Thị Kiều Oanh - Phân Tích Viên 3 | 16h |  | 880,000 |  |
| 21 | 1.3.2.3 | **Phân tích phi chức năng** | 1d | 2024-03-01 | 2024-03-01 |  |  |  | 0d |  |  |  | 8h |  | 440,000 |  |
| 22 | 1.3.2.3.1 | Xác định các yêu cầu như tiêu chuẩn về hiệu suất, bảo mật và giao diện người dùng | 1d | 2024-03-01 | 2024-03-01 | 20 |  |  | -11.5d | 0d |  | Hoàng Thanh Tùng - Phân Tích Viên 1 | 8h |  | 440,000 |  |
| 23 | 1.3.2.4 | **Phân tích thông số kỹ thuật** | 1d | 2024-03-04 | 2024-03-04 |  |  |  | 0d |  |  |  | 13.6h |  | 748,000 |  |
| 24 | 1.3.2.4.1 | Xác định các yêu cầu kỹ thuật của hệ thống | 0.3d | 2024-03-04 | 2024-03-04 | 22 |  |  | -11.5d | 0d |  | Đỗ Thị Diệu Ái - Phân Tích Viên 2 | 2.4h |  | 132,000 |  |
| 25 | 1.3.2.4.2 | Phân tích các thông số kỹ thuật về hiệu suất, dung lượng và độ tin cậy | 0.7d | 2024-03-04 | 2024-03-04 | 24 |  |  | -11.5d | 0d |  | Đỗ Thị Diệu Ái - Phân Tích Viên 2; Hoàng Thanh Tùng - Phân Tích Viên 1 | 11.2h |  | 616,000 |  |

| ID | WBS | Task | Type | Duration | Start | Finish | Predecessors | Total slack | Free slack | Constraint | Resources | Work | Cost |
| --- | --- | --- | --- | --- | --- | --- | --- | --- | --- | --- | --- | --- | --- |
| 26 | 1.3.2.5 | **Phân tích giao diện** |  | 1d | 2024-03-05 | 2024-03-05 |  | 0d |  |  |  | 8h | 440,000 |
| 27 | 1.3.2.5.1 | Lên ý tưởng về giao diện theo yêu cầu |  | 1d | 2024-03-05 | 2024-03-05 | 25 | -11.5d | 0d |  | Hoàng Thị Kiều Oanh - Phân Tích Viên 3 | 8h | 440,000 |
| 28 | 1.3.2.6 | **Xác định rủi ro** |  | 2d | 2024-03-06 | 2024-03-07 |  | 0d |  |  |  | 32h | 1,760,000 |
| 29 | 1.3.2.6.1 | Phân tích các rủi ro tiềm ẩn trong dự án và đề xuất các biện pháp phòng ngừa |  | 1d | 2024-03-06 | 2024-03-06 | 27 | -11.5d | 0d |  | Đỗ Thị Diệu Ái - Phân Tích Viên 2; Hoàng Thanh Tùng - Phân Tích Viên 1 | 16h | 880,000 |
| 30 | 1.3.2.6.2 | Xác định các vấn đề có thể phát sinh và các giải pháp giảm thiểu tác động của chúng |  | 1d | 2024-03-07 | 2024-03-07 | 29 | -11.5d | 0d |  | Đỗ Thị Diệu Ái - Phân Tích Viên 2; Hoàng Thanh Tùng - Phân Tích Viên 1 | 16h | 880,000 |
| 31 | 1.3.2.7 | **Lập kế hoạch và ước lượng công việc** |  | 2d | 2024-03-08 | 2024-03-11 |  | 0d |  |  |  | 24h | 1,320,000 |
| 32 | 1.3.2.7.1 | Phân tích công việc cần thực hiện và ước lượng thời gian và nguồn lực cần thiết |  | 1d | 2024-03-08 | 2024-03-08 | 30 | -11.5d | 0d |  | Hoàng Thanh Tùng - Phân Tích Viên 1; Hoàng Thị Kiều Oanh - Phân Tích Viên 3 | 16h | 880,000 |
| 33 | 1.3.2.7.2 | Lập bảng phân rã công việc |  | 1d | 2024-03-11 | 2024-03-11 | 32 | -11.5d | 0d |  | Hoàng Thanh Tùng - Phân Tích Viên 1 | 8h | 440,000 |
| 34 | 1.3.3 | **Lập Bảng Báo Cáo, Phản Hồi Khách Hàng** |  | 2d | 2024-03-12 | 2024-03-13 |  | 0d |  |  |  | 32h | 1,760,000 |
| 35 | 1.3.3.1 | **Lập bảng báo cáo, Phản hồi khách hàng** |  | 2d | 2024-03-12 | 2024-03-13 |  | 0d |  |  |  | 32h | 1,760,000 |
| 36 | 1.3.3.1.1 | Tạo tài liệu báo cáo về quá trình, các kết quả đạt được và kế hoạch cho giai đoạn tiếp theo của dự án |  | 1d | 2024-03-12 | 2024-03-12 | 33 | -11.5d | 0d |  | Đỗ Thị Diệu Ái - Phân Tích Viên 2; Hoàng Thanh Tùng - Phân Tích Viên 1; Hoàng Thị Kiều Oanh - Phân Tích Viên 3 | 24h | 1,320,000 |
| 37 | 1.3.3.1.2 | Liên hệ với khách hàng để trao đổi và xác nhận rằng phần mềm đã được thiết kế đáp ứng mong muốn của khách hàng |  | 1d | 2024-03-13 | 2024-03-13 | 36 | -11.5d | 0d |  | Hoàng Thị Kiều Oanh - Phân Tích Viên 3 | 8h | 440,000 |
| 38 | 1.3.4 | Chờ phê duyệt để tiến hành |  | 1d | 2024-03-14 | 2024-03-14 | 34 | -11.5d | 0d | finish no earlier than 2024-03-04 | Nguyễn Ngọc Cảnh Phong - Quản Lý | 8h | 800,000 |
| 39 | 1.3.5 | Hoàn thành phân tích | milestone | 0d | 2024-03-14 | 2024-03-14 | 38 | -11.5d | 0d | finish no earlier than 2024-03-04 | Đỗ Thị Diệu Ái - Phân Tích Viên 2 |  |  |
| 40 | 1.4 | **Thiết Kế** |  | 14d | 2024-03-15 | 2024-04-03 |  | 0d |  |  |  | 360h | 23,520,000 |
| 41 | 1.4.1 | **Thiết Kế CSDL** |  | 8d | 2024-03-15 | 2024-03-26 |  | 0d |  |  |  | 96h | 6,480,000 |
| 42 | 1.4.1.1 | **Thu nhập yêu cầu về dữ liệu từ bản báo cáo phân tích** |  | 1d | 2024-03-15 | 2024-03-15 |  | 0d |  |  |  | 16h | 1,120,000 |
| 43 | 1.4.1.1.1 | Xác định thông tin cần lưu trữ, các mối quan hệ giữa các đối tượng |  | 1d | 2024-03-15 | 2024-03-15 | 4 | 0d |  |  | Nguyễn Ngọc Cảnh Phong - Thiết Kế Dữ Liệu 1 | 8h | 560,000 |
| 44 | 1.4.1.1.2 | Xác định các yêu cầu về hiệu suất và bảo mật dữ liệu |  | 1d | 2024-03-15 | 2024-03-15 | 4 | 0d |  |  | Nguyễn Ngọc Cảnh Phong - Thiết Kế Dữ Liệu 1 | 8h | 560,000 |
| 45 | 1.4.1.2 | **Thiết kế mô hình dữ liệu** |  | 1d | 2024-03-18 | 2024-03-18 |  | 0d |  |  |  | 16h | 880,000 |
| 46 | 1.4.1.2.1 | Xác định các bảng dữ liệu, các mối quan hệ giữa các bảng trên |  | 1d | 2024-03-18 | 2024-03-18 | 42 | 0d |  |  | Nguyễn Thị Minh Thư- Kiểm Thử Viên 2 | 8h | 320,000 |
| 47 | 1.4.1.2.2 | Xác định các ràng buộc và các truy vấn cần thiết để truy cập dữ liệu |  | 1d | 2024-03-18 | 2024-03-18 | 42 | 0d |  |  | Nguyễn Thị Minh Thư - Thiết Kế Dữ Liệu 3 | 8h | 560,000 |
| 48 | 1.4.1.3 | **Thiết kế lược đồ quan hệ** |  | 2d | 2024-03-19 | 2024-03-20 |  | 0d |  |  |  | 32h | 2,240,000 |
| 49 | 1.4.1.3.1 | Định nghĩa cấu trúc cho mỗi bảng, bao gồm các trường (hoặc cột), xác định khóa chính và kiểu dữ liệu của các bảng trên |  | 2d | 2024-03-19 | 2024-03-20 | 45 | 0d |  |  | Đỗ Thị Diệu Ái - Thiết Kế Dữ Liệu 2 | 16h | 1,120,000 |
| 50 | 1.4.1.3.2 | Xác định các thực thể, các thuộc tính, các quan hệ, các ràng buộc và các truy vấn cần thiết để truy cập dữ liệu |  | 2d | 2024-03-19 | 2024-03-20 | 45 | 0d |  |  | Đỗ Thị Diệu Ái - Thiết Kế Dữ Liệu 2 | 16h | 1,120,000 |

| ID | WBS | Task | Type | Duration | Start | Finish | Predecessors | Total slack | Free slack | Resources | Work | Cost |
| --- | --- | --- | --- | --- | --- | --- | --- | --- | --- | --- | --- | --- |
| 51 | 1.4.1.4 | **Xây dựng lược đồ quan hệ** |  | 4d | 2024-03-21 | 2024-03-26 |  | 0d |  |  | 32h | 2,240,000 |
| 52 | 1.4.1.4.1 | Mô hình hóa cấu trúc dữ liệu đã thiết kế bằng cách sử dụng công cụ sơ đồ thực thể - quan hệ (ERD) |  | 1d | 2024-03-21 | 2024-03-21 | 48 | 0d |  | Đỗ Thị Diệu Ái - Thiết Kế Dữ Liệu 2 | 8h | 560,000 |
| 53 | 1.4.1.4.2 | Vẽ biểu đồ biểu diễn lược đồ quan hệ |  | 1d | 2024-03-22 | 2024-03-22 | 52 | 0d |  | Nguyễn Thị Minh Thư - Thiết Kế Dữ Liệu 3 | 8h | 560,000 |
| 54 | 1.4.1.4.3 | Chuẩn hóa cơ sở dữ liệu |  | 2d | 2024-03-25 | 2024-03-26 | 53 | 0d |  | Đỗ Thị Diệu Ái - Thiết Kế Dữ Liệu 2 | 16h | 1,120,000 |
| 55 | 1.4.2 | **Thiết kế cấu trúc phần mềm** |  | 5d | 2024-03-27 | 2024-04-02 |  | 0d |  |  | 160h | 11,200,000 |
| 56 | 1.4.2.1 | Mô tả các module của hệ thống |  | 5d | 2024-03-27 | 2024-04-02 | 51 | 0d |  | Nguyễn Ngọc Cảnh Phong - Thiết Kế Dữ Liệu 1 | 40h | 2,800,000 |
| 57 | 1.4.2.2 | Thiết kế biểu đồ tuần tự |  | 5d | 2024-03-27 | 2024-04-02 | 51 | 0d |  | Đỗ Thị Diệu Ái - Thiết Kế Dữ Liệu 2 | 40h | 2,800,000 |
| 58 | 1.4.2.3 | Thiết kế biểu đồ hoạt động |  | 5d | 2024-03-27 | 2024-04-02 | 51 | 0d |  | Nguyễn Thị Minh Thư - Thiết Kế Dữ Liệu 3 | 40h | 2,800,000 |
| 59 | 1.4.2.4 | Thiết kế biểu đồ thành phần |  | 5d | 2024-03-27 | 2024-04-02 | 51 | 0d |  | Nguyễn Thị Minh Thư - Thiết Kế Dữ Liệu 3 | 40h | 2,800,000 |
| 60 | 1.4.3 | **Thiết kế giao diện** |  | 4d | 2024-03-15 | 2024-03-20 |  | 10d |  |  | 48h | 2,160,000 |
| 61 | 1.4.3.1 | **Thu thập, phân tích yêu cầu từ bản báo cáo phân tích** |  | 1d | 2024-03-15 | 2024-03-15 |  | 10d | 0d |  | 16h | 640,000 |
| 62 | 1.4.3.1.1 | Xác định nhóm đích của ứng dụng, nhu cầu của người dùng |  | 1d | 2024-03-15 | 2024-03-15 | 4 | 18d |  | Lê Thị Bảo Trâm - Thiết Kế Giao Diện 1 | 8h | 320,000 |
| 63 | 1.4.3.1.2 | Xác định các tính năng cần thiết của ứng dụng |  | 1d | 2024-03-15 | 2024-03-15 | 4 | 18d |  | Lê Thị Bảo Trâm - Thiết Kế Giao Diện 1 | 8h | 320,000 |
| 64 | 1.4.3.2 | **Lên ý tưởng thiết kế giao diện người dùng** |  | 3d | 2024-03-18 | 2024-03-20 |  | 10d |  |  | 32h | 1,520,000 |
| 65 | 1.4.3.2.1 | Xác định các thao tác, chức năng của từng đối tượng |  | 1d | 2024-03-18 | 2024-03-18 | 61 | 18d | 0d | Lê Thị Bảo Trâm - Thiết Kế Giao Diện 1 | 8h | 320,000 |
| 66 | 1.4.3.2.2 | Xác định cấu trúc và vị trí của các phần tử giao diện |  | 1d | 2024-03-18 | 2024-03-18 | 61 | 18d | 0d | Lê Thị Bảo Trâm - Thiết Kế Giao Diện 1 | 8h | 320,000 |
| 67 | 1.4.3.2.3 | Vẽ các bản thiết kế sơ bộ của giao diện người dùng |  | 1d | 2024-03-19 | 2024-03-19 | 66, 65 | 18d | 0d | Hoàng Thị Kiều Oanh - Phân Tích Viên 3 | 8h | 440,000 |
| 68 | 1.4.3.2.4 | Thiết kế mockup màn hình giao diện người dùng |  | 1d | 2024-03-20 | 2024-03-20 | 67 | 18d |  | Hoàng Thị Kiều Oanh - Phân Tích Viên 3 | 8h | 440,000 |
| 69 | 1.4.4 | **Thiết kế thành phần hệ thống** |  | 2d | 2024-03-27 | 2024-03-28 |  | 3d |  |  | 48h | 2,880,000 |
| 70 | 1.4.4.1 | Thiết kế thành phần bảo mật |  | 2d | 2024-03-27 | 2024-03-28 | 41 | 3d |  | Nguyễn Ngọc Cảnh Phong - Thiết Kế Dữ Liệu 1 | 16h | 1,120,000 |
| 71 | 1.4.4.2 | Xác định các thành phần như máy chủ, mạng, các dịch vụ hỗ trợ |  | 2d | 2024-03-27 | 2024-03-28 | 41 | 3d |  | Đỗ Thị Diệu Ái - Thiết Kế Dữ Liệu 2; Nguyễn Thị Minh Thư- Kiểm Thử Viên 2 | 32h | 1,760,000 |
| 72 | 1.4.5 | Chờ Phê Duyệt Để Tiến Hành |  | 1d | 2024-04-03 | 2024-04-03 | 41, 55, 69 | 0d |  | Nguyễn Ngọc Cảnh Phong - Quản Lý | 8h | 800,000 |
| 73 | 1.4.6 | Hoàn Thành Thiết Kế | milestone | 0d | 2024-04-03 | 2024-04-03 | 72 | 0d |  | Nguyễn Ngọc Cảnh Phong - Thiết Kế Dữ Liệu 1 |  |  |
| 74 | 1.5 | **Triển Khai** |  | 13d | 2024-02-21 | 2024-03-08 |  | 0d |  |  |  |  |
| 75 | 1.5.1 | **Lập trình chức năng** |  | 6d | 2024-02-21 | 2024-02-28 |  | 0d |  |  |  |  |
| 76 | 1.5.1.1 | Phân tích logic hoạt động các tính năng và chức năng | manual | 2d | 2024-02-21 | 2024-02-22 |  |  |  |  |  |  |
| 77 | 1.5.1.2 | Lập trình lớp, đối tượng và hàm xử lý chức năng | manual | 1d | 2024-02-21 | 2024-02-21 |  |  |  |  |  |  |
| 78 | 1.5.1.3 | Lập trình module thực hiện chức năng cụ thể | manual | 5d | 2024-02-21 | 2024-02-27 |  |  |  |  |  |  |
| 79 | 1.5.1.4 | Liên kết các module thành hệ thống tông thể | manual | 1d | 2024-02-28 | 2024-02-28 | 78 |  |  |  |  |  |

| ID | WBS | Task | Type | Duration | Start | Finish | Predecessors | Total slack | Free slack | Resources | Work | Cost |
| --- | --- | --- | --- | --- | --- | --- | --- | --- | --- | --- | --- | --- |
| 80 | 1.5.2 | **Tương tác cơ sở dữ liệu** |  | 7d | 2024-02-21 | 2024-02-29 |  | 0d |  |  |  |  |
| 81 | 1.5.2.1 | Tạo cơ sở dữ liệu, bảng thuộc tính, ràng buộc trên sql | manual | 2d | 2024-02-21 | 2024-02-22 |  |  |  |  |  |  |
| 82 | 1.5.2.2 | Viết mã truy vấn, hàm, thủ tục sql | manual | 2d | 2024-02-23 | 2024-02-26 | 81 |  |  |  |  |  |
| 83 | 1.5.2.3 | Xử lý kết quả trả về từ CSDL | manual | 1d | 2024-02-27 | 2024-02-27 | 82 |  |  |  |  |  |
| 84 | 1.5.2.4 | Lập trình tích hợp cơ sở dữ liệu vào các hàm chức năng của hệ thống | manual | 2d | 2024-02-28 | 2024-02-29 | 83 |  |  |  |  |  |
| 85 | 1.5.3 | **Triển khai giao diện người dùng** |  | 5d | 2024-02-21 | 2024-02-27 |  | 0d |  |  |  |  |
| 86 | 1.5.3.1 | Phát triển giao diện (UI), hiển thị thông tin và tương tác người dùng | manual | 2d | 2024-02-21 | 2024-02-22 |  |  |  |  |  |  |
| 87 | 1.5.3.2 | Lập trình các sự kiện hành vi của các UI tác động trực tiếp vào hệ thống | manual | 3d | 2024-02-23 | 2024-02-27 | 86 |  |  |  |  |  |
| 88 | 1.5.4 | **Tối ưu hoá mã nguồn** |  | 6d | 2024-02-28 | 2024-03-06 |  | 0d |  |  |  |  |
| 89 | 1.5.4.1 | Kiểm tra, đánh giá và tối ưu mã nguồn | manual | 3d | 2024-02-28 | 2024-03-01 | 87 |  |  |  |  |  |
| 90 | 1.5.4.2 | Kiểm tra tính đúng khi các chức năng hoạt động | manual | 3d | 2024-02-28 | 2024-03-01 | 87 |  |  |  |  |  |
| 91 | 1.5.4.3 | Kiểm thử và sửa lỗi | manual | 3d | 2024-03-04 | 2024-03-06 | 89, 90 |  |  |  |  |  |
| 92 | 1.5.5 | **Tạo tài liệu hoá logic** |  | 2d | 2024-03-07 | 2024-03-08 |  | 0d |  |  |  |  |
| 93 | 1.5.5.1 | Tạo tài tiệu mô tả chú thích, giải thích cách mã nguồn hoạt động | manual | 2d | 2024-03-07 | 2024-03-08 | 88 |  |  |  |  |  |
| 94 | 1.5.5.2 | Tạo tài liệu kĩ thuật hướng dẫn sử dụng phần mềm | manual | 2d | 2024-03-07 | 2024-03-08 | 88 |  |  |  |  |  |
| 95 | 1.6 | **Kiểm thử** |  | 41.5d | 2024-02-02 | 2024-04-01 |  | 0d |  |  | 800h | 40,120,000 |
| 96 | 1.6.1 | **Phân tích yêu cầu** |  | 5.5d | 2024-02-21 | 2024-02-28 |  | 25.5d |  |  | 160h | 8,160,000 |
| 97 | 1.6.1.1 | Thu nhập tài liệu đặc tả dự án |  | 1d | 2024-02-21 | 2024-02-21 |  | 25.5d | 0d | Hoàng Thanh Tùng- Kiểm Thử Viên 1; Nguyễn Thị Minh Thư- Kiểm Thử Viên 2 | 16h | 720,000 |
| 98 | 1.6.1.2 | Nghiên cứu và phân tích yêu cầu trong tài liệu đặc tả |  | 3d | 2024-02-22 | 2024-02-26 | 97 | 25.5d | 0d | Hoàng Thanh Tùng- Kiểm Thử Viên 1; Nguyễn Thị Minh Thư- Kiểm Thử Viên 2 | 48h | 2,160,000 |
| 99 | 1.6.1.3 | Xác định yêu cầu kiểm thử chức năng |  | 2d | 2024-02-22 | 2024-02-23 | 97 | 26.5d | 1d | Nguyễn Thị Minh Thư- Kiểm Thử Viên 2; Đỗ Thị Diệu Ái - Phân Tích Viên 2; Hoàng Thanh Tùng- Kiểm Thử Viên 1 | 48h | 2,320,000 |
| 100 | 1.6.1.4 | Xác định yêu cầu kiểm thử phi chức năng |  | 1d | 2024-02-22 | 2024-02-22 | 97 | 27.5d | 2d | Nguyễn Thị Minh Thư- Kiểm Thử Viên 2; Đỗ Thị Diệu Ái - Phân Tích Viên 2; Hoàng Thanh Tùng- Kiểm Thử Viên 1 | 24h | 1,160,000 |
| 101 | 1.6.1.5 | Trao đổi yêu cầu |  | 12h | 2024-02-27 | 2024-02-28 | 98, 99, 100 | 25.5d |  | Hoàng Thanh Tùng- Kiểm Thử Viên 1; Nguyễn Ngọc Cảnh Phong - Quản Lý | 24h | 1,800,000 |
| 102 | 1.6.2 | **Lập kế hoạch kiểm thử** |  | 3.5d | 2024-02-27 | 2024-03-01 |  | 0d |  |  | 128h | 6,320,000 |
| 103 | 1.6.2.1 | Xác định phạm vi dự án | manual | 1d | 2024-02-27 | 2024-02-27 |  |  |  | Hoàng Thanh Tùng- Kiểm Thử Viên 1; Nguyễn Thị Minh Thư- Kiểm Thử Viên 2; Đỗ Thị Diệu Ái - Phân Tích Viên 2; Hoàng Thị Kiều Oanh - Phân Tích Viên 3 | 32h | 1,600,000 |
| 104 | 1.6.2.2 | Xác định phương án tiếp cận | manual | 1d | 2024-02-27 | 2024-02-28 |  |  |  | Hoàng Thanh Tùng- Kiểm Thử Viên 1; Nguyễn Thị Minh Thư- Kiểm Thử Viên 2; Đỗ Thị Diệu Ái - Phân Tích Viên 2; Hoàng Thị Kiều Oanh - Phân Tích Viên 3 | 32h | 1,600,000 |
| 105 | 1.7.2.3 | Xác định nguồn lực | manual | 1d | 2024-02-27 | 2024-02-28 |  |  |  | Đỗ Thị Diệu Ái - Phân Tích Viên 2; Hoàng Thanh Tùng- Kiểm Thử Viên 1; Hoàng Thị Kiều Oanh - Phân Tích Viên 3; Nguyễn Thị Minh Thư- Kiểm Thử Viên 2 | 32h | 1,600,000 |
| 106 | 1.7.2.4 | Lên kế hoạch thiết kế công việc kiểm thử | manual | 2d | 2024-02-28 | 2024-03-01 | 103, 104, 105 |  |  | Hoàng Thanh Tùng - Phân Tích Viên 1; Nguyễn Thị Minh Thư- Kiểm Thử Viên 2 | 32h | 1,520,000 |

| ID | WBS | Task | Type | Duration | Start | Finish | Predecessors | Total slack | Free slack | Constraint | Resources | Work | Cost |
| --- | --- | --- | --- | --- | --- | --- | --- | --- | --- | --- | --- | --- | --- |
| 107 | 1.6.3 | **Thiết kế kịch bản kiểm thử** |  | 10d | 2024-03-04 | 2024-03-18 |  | 0d |  |  |  | 208h | 11,400,000 |
| 108 | 1.6.3.1 | Review tài liệu | manual | 2d | 2024-03-04 | 2024-03-06 | 106 |  |  |  | Hoàng Thanh Tùng- Kiểm Thử Viên 1; Nguyễn Thị Minh Thư- Kiểm Thử Viên 2 | 32h | 1,440,000 |
| 109 | 1.6.3.2 | Viết testcase/checklist | manual | 3d | 2024-03-06 | 2024-03-11 | 108 |  |  |  | Hoàng Thanh Tùng- Kiểm Thử Viên 1; Nguyễn Thị Minh Thư- Kiểm Thử Viên 2 | 48h | 2,160,000 |
| 110 | 1.6.3.3 | Chuẩn bị dữ liệu kiểm thử | manual | 2d | 2024-03-11 | 2024-03-13 | 109 |  |  |  | Hoàng Thanh Tùng- Kiểm Thử Viên 1; Nguyễn Thị Minh Thư- Kiểm Thử Viên 2 | 32h | 1,440,000 |
| 111 | 1.6.3.4 | Review testcase/checklist |  | 3d | 2024-03-13 | 2024-03-18 | 110 | 2.5d | 0d |  | Đỗ Thị Diệu Ái - Phân Tích Viên 2; Hoàng Thanh Tùng - Phân Tích Viên 1; Hoàng Thị Kiều Oanh - Phân Tích Viên 3; Nguyễn Ngọc Cảnh Phong - Quản Lý | 96h | 6,360,000 |
| 112 | 1.6.4 | **Thiết lập môi trường kiểm thử** |  | 2d | 2024-03-18 | 2024-03-20 |  | 0d |  |  |  | 48h | 2,160,000 |
| 113 | 1.6.4.1 | Thiết lập môi trường kiểm thử(sever/client/network) | manual | 2d | 2024-03-18 | 2024-03-20 | 111 |  |  |  | Hoàng Thanh Tùng- Kiểm Thử Viên 1; Nguyễn Thị Minh Thư- Kiểm Thử Viên 2 | 32h | 1,440,000 |
| 114 | 1.6.4.2 | Chuẩn bị testcase để kiểm tra xem môi trường cài đặt | manual | 1d | 2024-03-18 | 2024-03-19 | 111 |  |  |  | Hoàng Thanh Tùng- Kiểm Thử Viên 1; Nguyễn Thị Minh Thư- Kiểm Thử Viên 2 | 16h | 720,000 |
| 115 | 1.6.5 | **Thực hiện kiểm thử** |  | 9d | 2024-03-19 | 2024-04-01 |  | 0d |  |  |  | 200h | 8,960,000 |
| 116 | 1.6.5.1 | Thực hiện các testcase như thiết kế | manual | 3d | 2024-03-19 | 2024-03-22 | 114 |  |  |  | Hoàng Thanh Tùng- Kiểm Thử Viên 1; Nguyễn Thị Minh Thư- Kiểm Thử Viên 2 | 48h | 2,160,000 |
| 117 | 16.5.3 | So sánh kết quả/theo dõi tình trạng lỗi |  | 3d | 2024-03-19 | 2024-03-22 | 114 | 2.5d | 0d |  | Hoàng Thanh Tùng- Kiểm Thử Viên 1; Nguyễn Thị Minh Thư- Kiểm Thử Viên 2 | 48h | 2,160,000 |
| 118 | 1.6.5.4 | Thử hiện kiểm thử lại để xác định các lỗ hổng đã được sửa chữa |  | 3d | 2024-03-22 | 2024-03-27 | 116, 117 | 2.5d | 0d |  | Hoàng Thanh Tùng- Kiểm Thử Viên 1; Nguyễn Thị Minh Thư- Kiểm Thử Viên 2 | 48h | 2,160,000 |
| 119 | 1.6.5.5 | Đưa ra giải pháp |  | 2d | 2024-03-27 | 2024-03-29 | 118 | 2.5d | 0d |  | Hoàng Thanh Tùng- Kiểm Thử Viên 1; Nguyễn Thị Minh Thư- Kiểm Thử Viên 2 | 32h | 1,440,000 |
| 120 | 1.6.5.2 | Đo và phân tích tiến độ | manual | 1d | 2024-03-29 | 2024-04-01 | 119 |  |  |  | Hoàng Thanh Tùng- Kiểm Thử Viên 1; Nguyễn Thị Minh Thư- Kiểm Thử Viên 2 | 16h | 720,000 |
| 121 | 1.6.5.6 | Báo cáo tình hình thực hiện dự án |  | 1d | 2024-03-29 | 2024-04-01 | 119 | 2.5d |  |  | Nguyễn Thị Minh Thư- Kiểm Thử Viên 2 | 8h | 320,000 |
| 122 | 1.6.6 | **Đóng chu trình kiểm thử** |  | 1d | 2024-02-02 | 2024-02-02 |  | 0d |  |  |  | 56h | 3,120,000 |
| 123 | 1.6.6.1 | Tổng kết báo cáo kết quả |  | 1d | 2024-02-02 | 2024-02-02 |  | 43d |  | finish no earlier than 2024-02-02 | Hoàng Thanh Tùng- Kiểm Thử Viên 1; Nguyễn Thị Minh Thư- Kiểm Thử Viên 2 | 16h | 720,000 |
| 124 | 1.6.6.2 | Đánh giá tiêu chí hoàn thành | manual | 1d | 2024-02-02 | 2024-02-02 |  |  |  |  | Đỗ Thị Diệu Ái - Phân Tích Viên 2; Hoàng Thanh Tùng- Kiểm Thử Viên 1; Hoàng Thị Kiều Oanh - Phân Tích Viên 3; Nguyễn Ngọc Cảnh Phong - Quản Lý; Nguyễn Thị Minh Thư- Kiểm Thử Viên 2 | 40h | 2,400,000 |
| 125 | 1.7 | **Bàn giao** |  | 2d? | 2024-02-21 | 2024-02-22 |  | 29d |  |  |  | 16h | 1,600,000 |
| 126 | 1.7.1 | Cài đặt phần mềm |  | 1d? | 2024-02-21 | 2024-02-21 |  | 29d | 0d |  | Nguyễn Ngọc Cảnh Phong - Quản Lý | 8h | 800,000 |
| 127 | 1.7.2 | Hướng dẫn phần mềm |  | 1d? | 2024-02-22 | 2024-02-22 | 126 | 29d |  |  | Nguyễn Ngọc Cảnh Phong - Quản Lý | 8h | 800,000 |
