# QuanTri

Schedule from MS Project, 2024-02-21 to 2024-04-24, costs in ₫, A marks actual dates.

## Calendars

- Standard: Mon-Fri 08:00-12:00, 13:00-17:00; Sat-Sun off. Exceptions (off unless hours are given): 2024-04-18 (Giỗ Tỗ Hùng Vương).

## Resources

| Resource | Group | Rate |
| --- | --- | --- |
| Nguyễn Ngọc Cảnh Phong - Quản Lý | Quản Lý | 100000 |
| Trần Văn Huy - Lập Trình Viên 1 | Lập Trình | 40000 |
| Hoàng Thanh Tùng- Kiểm Thử Viên 1 | Kiểm Thử | 50000 |
| Trần Văn Huy - Kĩ Thuật Viên | Kĩ Thuật | 50000 |
| Đỗ Thị Diệu Ái - Phân Tích Viên 2 | Phân Tích | 55000 |
| Hoàng Thị Kiều Oanh - Thiết Kế Giao Diện 2 | Giao Diện | 40000 |
| Nguyễn Ngọc Cảnh Phong - Lập Trình Viên 2 | Lập Trình | 40000 |
| Hoàng Thanh Tùng - Phân Tích Viên 1 | Phân Tích | 55000 |
| Lê Thị Bảo Trâm - Thiết Kế Giao Diện 1 | Giao Diện | 40000 |
| Nguyễn Thị Minh Thư- Kiểm Thử Viên 2 | Kiểm Thử | 40000 |
| Nguyễn Ngọc Cảnh Phong - Thiết Kế Dữ Liệu 1 | Dữ Liệu | 70000 |
| Đỗ Thị Diệu Ái - Thiết Kế Dữ Liệu 2 | Dữ Liệu | 70000 |
| Hoàng Thị Kiều Oanh - Phân Tích Viên 3 | Phân Tích | 55000 |
| Nguyễn Thị Minh Thư - Thiết Kế Dữ Liệu 3 | Dữ Liệu | 70000 |

## Schedule

| ID | WBS | Task | Type | Duration | Start | Finish | Predecessors | Complete | Remaining | Total slack | Free slack | Constraint | Resources | Work | Actual work | Cost | Actual cost |
| --- | --- | --- | --- | --- | --- | --- | --- | --- | --- | --- | --- | --- | --- | --- | --- | --- | --- |
| 1 | 1 | **XÂY DỰNG HỆ THỐNG QUẢN LÝ KẾT NỐI VÀ CUNG CẤP GIA SƯ TP-HUẾ** |  | 45d? | 2024-02-21 A | 2024-04-24 |  | 4% | 43.3d? | 0d |  |  |  | 536h | 8h | 24,400,000 | 800,000 |
| 2 | 1.1 | Bản kế hoạch dự án |  | 1d | 2024-02-21 A | 2024-02-21 A |  | 100% |  |  |  | finish no earlier than 2024-02-21 | Nguyễn Ngọc Cảnh Phong - Quản Lý | 8h | 8h | 800,000 | 800,000 |
| 3 | 1.2 | Thời gian phê duyệt dự án |  | 1d | 2024-02-22 A | 2024-02-22 A | 2 | 100% |  |  |  | start no earlier than 2024-02-22 |  |  |  |  |  |
| 4 | 1.3 | **Phân Tích** |  | 3d? | 2024-02-21 | 2024-02-23 |  |  |  | -0.5d | 0d |  |  | 40h |  | 2,560,000 |  |
| 5 | 1.3.1 | **Thu Thập, Phân Tích Nhu Cầu Khách Hàng** |  | 0d | 2024-02-21 | 2024-02-21 |  |  |  |  |  |  | Hoàng Thanh Tùng - Phân Tích Viên 1; Đỗ Thị Diệu Ái - Phân Tích Viên 2 |  |  |  |  |
| 6 | 1.3.1.1 | **Trao đổi, thu nhập yêu cầu khách hàng** |  | 0d | 2024-02-21 | 2024-02-21 |  |  |  |  |  |  |  |  |  |  |  |
| 7 | 1.3.1.1.1 | Gặp mặt, trao đổi với khách hàng |  | 0.5d | 2024-02-21 | 2024-02-21 |  |  |  | -0.5d | 0d |  |  |  |  |  |  |
| 8 | 1.3.1.1.2 | Thu nhập, ghi chú các thông tin, nhu cầu của khách hàng |  | 0.5d | 2024-02-21 | 2024-02-21 |  |  |  | 44.5d |  | start no earlier than 2024-02-21 |  |  |  |  |  |
| 9 | 1.3.1.2 | **Phân tích nhu cầu khách hàng** |  | 0d | 2024-02-22 | 2024-02-22 |  |  |  |  |  |  |  |  |  |  |  |
| 10 | 1.3.1.2.1 | Chọn lọc, phân loại các yêu cầu của khách hàng | milestone | 0d | 2024-02-22 | 2024-02-22 |  |  |  | 43d |  | finish no earlier than 2024-02-22 |  |  |  |  |  |
| 11 | 1.3.1.2.2 | Xác định các yêu cầu chức năng và phi chức năng | milestone | 0d | 2024-02-22 | 2024-02-22 |  |  |  | 0d |  |  |  |  |  |  |  |
| 12 | 1.3.1.2.3 | Tổng kết những thông tin đã thu nhập và phân tích | milestone | 0d | 2024-02-22 | 2024-02-22 |  |  |  | 0d |  |  |  |  |  |  |  |
| 13 | 1.3.1.2.4 | Xác định những yêu cầu đáp ứng được và không đáp ứng được | milestone | 0d | 2024-02-22 | 2024-02-22 |  |  |  | 0d |  |  |  |  |  |  |  |
| 14 | 1.3.2 | **Lên ý tưởng, Phân tích cấu trúc phần mềm, phi chức năng, thông số kỹ thuật, giao diện, xác định rủi ro, ước lượng công việc** |  | 1d? | 2024-02-21 | 2024-02-21 | 5 |  |  | 2d | 0d |  | Hoàng Thanh Tùng - Phân Tích Viên 1; Đỗ Thị Diệu Ái - Phân Tích Viên 2 | 16h |  | 880,000 |  |
| 15 | 1.3.2.1 | **Tổ chức và lên ý tưởng** |  | 1d? | 2024-02-21 | 2024-02-21 |  |  |  | 2d |  |  |  |  |  |  |  |
| 16 | 1.3.2.1.1 | Tổ chức họp đội ngũ trong việc lên ý tưởng |  | 1d? | 2024-02-21 | 2024-02-21 |  |  |  | 2d |  |  |  |  |  |  |  |
| 17 | 1.3.2.1.2 | Xây dựng mô phỏng dự án |  | 1d? | 2024-02-21 | 2024-02-21 |  |  |  | 2d |  |  |  |  |  |  |  |
| 18 | 1.3.2.2 | **Phân tích cấu trúc phần mềm** |  | 1d? | 2024-02-21 | 2024-02-21 |  |  |  | 2d |  |  |  |  |  |  |  |
| 19 | 1.3.2.2.1 | Xác định và mô tả các chức năng cần thiết của hệ thống |  | 1d? | 2024-02-21 | 2024-02-21 |  |  |  | 2d |  |  |  |  |  |  |  |
| 20 | 1.3.2.2.2 | **Phân tích phi chức năng** |  | 1d? | 2024-02-21 | 2024-02-21 |  |  |  | 2d |  |  |  |  |  |  |  |
| 21 | 1.3.2.2.2.1 | Xác định các yêu cầu, như tiêu chuẩn về hiệu suất, bảo mật và giao diện người dùng |  | 1d? | 2024-02-21 | 2024-02-21 |  |  |  | 2d |  |  |  |  |  |  |  |
| 22 | 1.3.2.3 | **Phân tích thông số kỹ thuật** |  | 1d? | 2024-02-21 | 2024-02-21 |  |  |  | 2d |  |  |  |  |  |  |  |
| 23 | 1.3.2.3.1 | Xác định các yêu cầu kỹ thuật của hệ thống |  | 1d? | 2024-02-21 | 2024-02-21 |  |  |  | 2d |  |  |  |  |  |  |  |
| 24 | 1.3.2.3.2 | Phân tích các thông số kỹ thuật về hiệu suất, dung lượng và độ tin cậy |  | 1d? | 2024-02-21 | 2024-02-21 |  |  |  | 2d |  |  |  |  |  |  |  |

| ID | WBS | Task | Type | Duration | Start | Finish | Predecessors | Total slack | Free slack | Resources | Work | Cost |
| --- | --- | --- | --- | --- | --- | --- | --- | --- | --- | --- | --- | --- |
| 25 | 1.3.2.3.3 | **Phân tích giao diện** |  | 1d? | 2024-02-21 | 2024-02-21 |  | 2d |  |  |  |  |
| 26 | 1.3.2.3.3.1 | Lên ý tưởng về giao diện theo yêu cầu khách |  | 1d? | 2024-02-21 | 2024-02-21 |  | 2d |  |  |  |  |
| 27 | 1.3.2.3.4 | **Xác định rủi ro** |  | 1d? | 2024-02-21 | 2024-02-21 |  | 2d |  |  |  |  |
| 28 | 1.3.2.3.4.1 | Phân tích các rủi ro tiềm ẩn trong dự án và đề xuất các biện pháp phòng ngừa |  | 1d? | 2024-02-21 | 2024-02-21 |  | 2d |  |  |  |  |
| 29 | 1.3.2.3.4.2 | Xác định các vấn đề có thể phát sinh và các giải pháp giảm thiểu tác động của chúng |  | 1d? | 2024-02-21 | 2024-02-21 |  | 2d |  |  |  |  |
| 30 | 1.3.2.3.5 | **Lập kế hoạch và ước lượng công việc** |  | 1d? | 2024-02-21 | 2024-02-21 |  | 2d |  |  |  |  |
| 31 | 1.3.2.3.5.1 | Phân tích công việc cần thực hiện và ước lượng thời gian và nguồn lực cần thiết |  | 1d? | 2024-02-21 | 2024-02-21 |  | 2d |  |  |  |  |
| 32 | 1.3.2.3.5.2 | Lập bản phân rã công việc |  | 1d? | 2024-02-21 | 2024-02-21 |  | 2d |  |  |  |  |
| 33 | 1.3.3 | **Lập Bảng Báo Cáo, Phản Hồi Khách Hàng** |  | 1d? | 2024-02-21 | 2024-02-22 | 14 | 2d | 0d | Hoàng Thanh Tùng - Phân Tích Viên 1; Đỗ Thị Diệu Ái - Phân Tích Viên 2 | 16h | 880,000 |
| 34 | 1.3.3.1 | **Lập bảng báo cáo, Phản Hồi Khách Hàng** |  | 1d? | 2024-02-21 | 2024-02-22 |  | 2d |  |  |  |  |
| 35 | 1.3.3.1.1 | Tạo tài liệu báo cáo về quá trình, các kết quả đạt được, và kế hoạch cho giai đoạn tiếp theo của dự án | manual | 1d? | 2024-02-21 | 2024-02-22 |  |  |  |  |  |  |
| 36 | 1.3.3.1.2 | Liên hệ với khách hàng để trao đổi và xác nhận rằng phần mềm đã được thiết kế đáp ứng được mong muốn của khách hàng | manual | 1d? | 2024-02-21 | 2024-02-22 |  |  |  |  |  |  |
| 37 | 1.3.4 | Chờ Phê Duyệt Để Tiến Hành |  | 1d | 2024-02-23 | 2024-02-23 | 33 | 6d | 0d | Nguyễn Ngọc Cảnh Phong - Quản Lý | 8h | 800,000 |
| 38 | 1.3.5 | Hoàn Thành Phân Tích | milestone | 0d | 2024-02-23 | 2024-02-23 | 37 | 6d | 0d | Đỗ Thị Diệu Ái - Phân Tích Viên 2 |  |  |
| 39 | 1.4 | **Thiết kế** |  | 14d | 2024-02-26 | 2024-03-15 |  | 0d |  |  | 88h | 4,000,000 |
| 40 | 1.4.1 | Thiết Kế Cấu Trúc Phần Mềm |  | 2d | 2024-02-26 | 2024-02-27 | 38 | 6d | 0d | Lê Thị Bảo Trâm - Thiết Kế Giao Diện 1 | 16h | 640,000 |
| 41 | 1.4.2 | Thiết Kế Giao Diện |  | 2d | 2024-02-28 | 2024-02-29 | 40 | 6d | 0d | Hoàng Thị Kiều Oanh - Thiết Kế Giao Diện 2 | 16h | 640,000 |
| 42 | 1.4.3 | Thiết Kế Cơ Sở Dữ Liệu |  | 2d | 2024-03-01 | 2024-03-04 | 41 | 6d | 0d | Lê Thị Bảo Trâm - Thiết Kế Giao Diện 1; Hoàng Thị Kiều Oanh - Thiết Kế Giao Diện 2 | 32h | 1,280,000 |
| 43 | 1.4.4 | Thiết Kế Thành Phần Hệ Thống |  | 1d | 2024-03-05 | 2024-03-05 | 42 | 6d | 0d | Lê Thị Bảo Trâm - Thiết Kế Giao Diện 1; Hoàng Thị Kiều Oanh - Thiết Kế Giao Diện 2 | 16h | 640,000 |
| 44 | 1.4.5 | Chờ Phê Duyệt Để Tiến Hành |  | 1d | 2024-03-06 | 2024-03-06 | 43 | 6d |  | Nguyễn Ngọc Cảnh Phong - Quản Lý | 8h | 800,000 |
| 45 | 1.4.6 | Hoàn Thành Thiết kế | milestone, manual | 0d | 2024-03-15 | 2024-03-15 | 44 |  |  |  |  |  |
| 46 | 1.5 | **Triển Khai** |  | 20d | 2024-03-15 | 2024-04-11 |  | 0d |  |  | 320h | 12,800,000 |
| 47 | 1.5.1 | Triển Khai Logic Hệ Thông |  | 5d | 2024-03-15 | 2024-03-21 | 45 | 0d |  | Trần Văn Huy - Lập Trình Viên 1; Nguyễn Ngọc Cảnh Phong - Lập Trình Viên 2 | 80h | 3,200,000 |
| 48 | 1.5.2 | Phát Triển Các Thành Phần CSDL |  | 5d | 2024-03-22 | 2024-03-28 | 47 | 0d |  | Trần Văn Huy - Lập Trình Viên 1; Nguyễn Ngọc Cảnh Phong - Lập Trình Viên 2 | 80h | 3,200,000 |
| 49 | 1.5.3 | Lập Trình Hệ Thống |  | 5d | 2024-03-29 | 2024-04-04 | 48 | 0d |  | Trần Văn Huy - Lập Trình Viên 1; Nguyễn Ngọc Cảnh Phong - Lập Trình Viên 2 | 80h | 3,200,000 |
| 50 | 1.5.4 | Đánh Giá Và Tối Ưu Mã Nguồn |  | 5d | 2024-04-05 | 2024-04-11 | 49 | 0d |  | Trần Văn Huy - Lập Trình Viên 1; Nguyễn Ngọc Cảnh Phong - Lập Trình Viên 2 | 80h | 3,200,000 |
| 51 | 1.5.5 | Hoàn Thành Lập Trình | milestone | 0d | 2024-04-11 | 2024-04-11 | 50 | 0d |  |  |  |  |

| ID | WBS | Task | Type | Duration | Start | Finish | Predecessors | Total slack | Resources | Work | Cost |
| --- | --- | --- | --- | --- | --- | --- | --- | --- | --- | --- | --- |
| 52 | 1.6 | **Kiểm Thử** |  | 6d | 2024-04-12 | 2024-04-22 |  | 0d |  | 64h | 3,440,000 |
| 53 | 1.6.1 | Lập Bảng Kế Hoạch Kiểm Thử |  | 1d | 2024-04-12 | 2024-04-12 | 51 | 0d | Hoàng Thanh Tùng- Kiểm Thử Viên 1 | 8h | 400,000 |
| 54 | 1.6.2 | Viết Và Tiến Hành Các Ca Kiểm Thử |  | 1d | 2024-04-15 | 2024-04-15 | 53 | 0d | Hoàng Thanh Tùng- Kiểm Thử Viên 1 | 8h | 400,000 |
| 55 | 1.6.3 | Kiểm Thử Toàn Hệ Thống |  | 1d | 2024-04-16 | 2024-04-16 | 54 | 0d | Hoàng Thanh Tùng- Kiểm Thử Viên 1 | 8h | 400,000 |
| 56 | 1.6.4 | Xác Định Và Sữa Lỗi |  | 2d | 2024-04-17 | 2024-04-19 | 55 | 0d | Hoàng Thanh Tùng- Kiểm Thử Viên 1; Trần Văn Huy - Lập Trình Viên 1 | 32h | 1,440,000 |
| 57 | 1.6.5 | Đánh Giá Cuối Cùng |  | 1d | 2024-04-22 | 2024-04-22 | 56 | 0d | Nguyễn Ngọc Cảnh Phong - Quản Lý | 8h | 800,000 |
| 58 | 1.6.6 | Hoàn Thành Kiểm Thử | milestone | 0d | 2024-04-22 | 2024-04-22 | 57 | 0d |  |  |  |
| 59 | 1.7 | **Bàn Giao** |  | 2d | 2024-04-23 | 2024-04-24 |  | 0d |  | 16h | 800,000 |
| 60 | 1.7.1 | Cài Đặt Phần Mềm |  | 1d | 2024-04-23 | 2024-04-23 | 58 | 0d | Trần Văn Huy - Kĩ Thuật Viên | 8h | 400,000 |
| 61 | 1.7.2 | Hướng Dẫn Phầm Mềm |  | 1d | 2024-04-24 | 2024-04-24 | 60 | 0d | Trần Văn Huy - Kĩ Thuật Viên | 8h | 400,000 |
